# 10520130_L4

Schedule from MS Project, 2013-08-26 to 2016-01-02, costs in ₫, A marks actual dates.

## Calendars

- Standard: Mon-Thu 07:30-11:30, 13:00-17:00; Fri 07:30-11:30, 13:30-17:30; Sat 08:00-24:00; Sun off.

## Resources

| Resource | Unit | Rate |
| --- | --- | --- |
| Trưởng nhóm |  | 10000 |
| Nguyễn Tấn Hoan (Trưởng nhóm) |  | 40000 |
| Huỳnh Ngọc Hiệp |  | 35000 |
| Nguyễn Văn Sinh |  | 35000 |
| Phan Văn Tâm |  | 35000 |
| Giấy | Trang | 200 |
| Điện | Giờ | 1000 |
| Nước uống | Chai | 8000 |
| Bảo trì | Năm | 4000000 |

## Schedule

| ID | WBS | Task | Duration | Start | Finish | Predecessors | Complete | Remaining | Total slack | Free slack | Constraint | Resources | Work | Actual work | Cost | Actual cost |
| --- | --- | --- | --- | --- | --- | --- | --- | --- | --- | --- | --- | --- | --- | --- | --- | --- |
| 1 | 1 | **Đồ án môn học hướng đối tượng** | 859.35d | 2013-08-26 A | 2016-01-02 |  | 12% | 757.3d | 0d |  |  |  | 1055.5h | 823.1h | 55,210,000 | 29,260,000 |
| 2 | 1.1 | Tập hợp thành viên cho nhóm | 7d | 2013-08-26 A | 2013-09-02 A |  | 100% |  |  |  | start no earlier than 2013-08-26 | Trưởng nhóm | 56.5h | 56.5h | 565,000 | 565,000 |
| 3 | 1.2 | Xác định đề tài | 6.88d | 2013-09-02 A | 2013-09-13 A | 2 | 100% |  |  |  | finish no earlier than 2013-09-13 | Nguyễn Văn Sinh | 55h | 55h | 1,925,000 | 1,925,000 |
| 4 | 1.3 | **Xác định yêu cầu đề tài** | 19d | 2013-09-13 A | 2013-10-02 |  | 92% | 1.45d | 92d |  |  |  | 152h | 140.4h | 5,480,000 | 5,058,000 |
| 5 | 1.3.1 | **Xác định các yêu cầu của phần mềm** | 8d | 2013-09-13 A | 2013-09-21 |  | 90% | 0.8d | 102.35d |  |  |  | 64h | 57.6h | 2,240,000 | 2,016,000 |
| 6 | 1.3.1.1 | Xác định các yêu cầu chức năng | 5d | 2013-09-13 A | 2013-09-18 | 3 | 90% | 0.5d | 105.05d | 0d |  | Huỳnh Ngọc Hiệp | 40h | 36h | 1,400,000 | 1,260,000 |
| 7 | 1.3.1.2 | Xác định các yêu cầu phi chức năng | 3d | 2013-09-18 A | 2013-09-21 | 6 | 90% | 0.3d | 102.35d | 0d |  | Nguyễn Văn Sinh | 24h | 21.6h | 840,000 | 756,000 |
| 8 | 1.3.2 | Đặc tả các yêu cầu phần mềm (Thiết kế biểu mẫu và quy định) | 4d | 2013-09-21 A | 2013-09-25 | 7 | 90% | 0.4d | 98.75d | 0d |  | Nguyễn Tấn Hoan (Trưởng nhóm) | 32h | 28.8h | 1,280,000 | 1,152,000 |
| 9 | 1.3.3 | Mô hình hóa các yêu cầu | 5d | 2013-09-25 A | 2013-09-30 | 8 | 95% | 0.25d | 94d |  |  | Phan Văn Tâm | 40h | 38h | 1,400,000 | 1,330,000 |
| 10 | 1.3.4 | Xác định môi trường phát triển của dự án | 2d | 2013-09-30 A | 2013-10-02 A | 9 | 100% |  |  |  |  | Nguyễn Văn Sinh | 16h | 16h | 560,000 | 560,000 |
| 11 | 1.4 | **Phân tích phần mềm** | 8d | 2013-10-02 A | 2013-10-10 |  | 90% | 0.8d | 84d |  |  |  | 104h | 93.6h | 3,760,000 | 3,384,000 |
| 12 | 1.4.1 | Phân tích các module của phần mềm | 3d | 2013-10-02 A | 2013-10-05 | 10 | 90% | 0.3d | 88.5d | 0d |  | Nguyễn Tấn Hoan (Trưởng nhóm) | 24h | 21.6h | 960,000 | 864,000 |
| 13 | 1.4.2 | Phân tích các yêu cầu của từng module | 5d | 2013-10-05 A | 2013-10-10 | 12 | 90% | 0.5d | 84d | 0d |  | Huỳnh Ngọc Hiệp | 40h | 36h | 1,400,000 | 1,260,000 |
| 14 | 1.4.3 | Phân tích các công nghệ sử dụng cho từng module | 5d | 2013-10-05 A | 2013-10-10 | 13SS | 90% | 0.5d | 83.5d | 0d |  | Phan Văn Tâm | 40h | 36h | 1,400,000 | 1,260,000 |
| 15 | 1.5 | **Thiết kế phần mềm** | 67d | 2013-10-10 A | 2013-12-16 |  | 85% | 9.86d | 17d |  |  |  | 560h | 477.6h | 20,040,000 | 17,128,000 |
| 16 | 1.5.1 | **Thiết kế các yêu cầu hệ thống phần mềm** | 9d | 2013-10-10 A | 2013-10-19 |  | 90% | 0.94d | 75d |  |  |  | 96h | 86h | 3,480,000 | 3,120,000 |
| 17 | 1.5.1.1 | Thiết kế yêu cầu nghiệp vụ | 2d | 2013-10-10 A | 2013-10-12 | 14 | 90% | 0.2d | 81.7d | 0d |  | Huỳnh Ngọc Hiệp | 16h | 14.4h | 560,000 | 504,000 |
| 18 | 1.5.1.2 | Thiết kế các yêu cầu tiến hóa | 2d | 2013-10-12 A | 2013-10-14 | 17 | 90% | 0.2d | 79.9d | 0d |  | Nguyễn Văn Sinh | 16h | 14.4h | 560,000 | 504,000 |
| 19 | 1.5.1.3 | Thiết kế các yêu cầu hiệu quả | 1d | 2013-10-14 A | 2013-10-15 | 18 | 90% | 0.1d | 79d | 0d |  | Nguyễn Tấn Hoan (Trưởng nhóm) | 8h | 7.2h | 320,000 | 288,000 |
| 20 | 1.5.1.4 | Thiết kế các yêu cầu tiện dụng | 1d | 2013-10-14 A | 2013-10-15 | 19SS | 85% | 0.15d | 78.95d | 0d |  | Phan Văn Tâm | 8h | 6.8h | 280,000 | 238,000 |
| 21 | 1.5.1.5 | Thiết kế các yêu cầu tương thích | 1d | 2013-10-15 A | 2013-10-16 | 20 | 95% | 0.05d | 78d | 0d |  | Huỳnh Ngọc Hiệp | 8h | 7.6h | 280,000 | 266,000 |
| 22 | 1.5.1.6 | Thiết kế các yêu cầu bảo mật | 1d | 2013-10-15 A | 2013-10-16 | 21SS | 80% | 0.2d | 77.9d | 0d |  | Nguyễn Văn Sinh | 8h | 6.4h | 280,000 | 224,000 |
| 23 | 1.5.1.7 | Thiết kế yêu cầu an toàn | 1d | 2013-10-16 A | 2013-10-17 | 22 | 90% | 0.1d | 77d | 0d |  | Nguyễn Tấn Hoan (Trưởng nhóm) | 8h | 7.2h | 320,000 | 288,000 |
| 24 | 1.5.1.8 | Thiết kế các yêu cầu công nghệ | 1d | 2013-10-16 A | 2013-10-17 | 23SS | 90% | 0.1d | 72.8d | 0d |  | Phan Văn Tâm | 8h | 7.2h | 280,000 | 252,000 |
| 25 | 1.5.1.9 | Tổng kết tài liệu về phần các yêu cầu của hệ thống phần mềm | 1d | 2013-10-17 A | 2013-10-18 | 24 | 95% | 0.05d | 71.85d | 0d |  | Nguyễn Tấn Hoan (Trưởng nhóm) | 8h | 7.6h | 320,000 | 304,000 |
| 26 | 1.5.1.10 | Kiểm duyệt lại phần thiết kế các yêu cầu phần mềm | 1d | 2013-10-18 A | 2013-10-19 | 25 | 90% | 0.1d | 70.95d | 0d |  | Huỳnh Ngọc Hiệp | 8h | 7.2h | 280,000 | 252,000 |

| ID | WBS | Task | Duration | Start | Finish | Predecessors | Complete | Remaining | Total slack | Free slack | Resources | Work | Actual work | Cost | Actual cost |
| --- | --- | --- | --- | --- | --- | --- | --- | --- | --- | --- | --- | --- | --- | --- | --- |
| 27 | 1.5.2 | **Mô hình hóa dữ liệu** | 8d | 2013-10-19 A | 2013-10-26 |  | 91% | 0.75d | 63.7d |  |  | 64h | 58h | 2,280,000 | 2,068,000 |
| 28 | 1.5.2.1 | Thiết kế sơ đồ luồng dữ liệu | 6d | 2013-10-19 A | 2013-10-25 | 26 | 90% | 0.6d | 65.55d | 0d | Nguyễn Văn Sinh | 48h | 43.2h | 1,680,000 | 1,512,000 |
| 29 | 1.5.2.2 | Tổng hợp tài liệu về phần sơ đồ luồng dữ liệu | 1d | 2013-10-25 A | 2013-10-26 | 28 | 90% | 0.1d | 64.65d | 0d | Huỳnh Ngọc Hiệp | 8h | 7.2h | 280,000 | 252,000 |
| 30 | 1.5.2.3 | Kiểm duyệt phần mô hình hóa dữ liệu | 1d | 2013-10-26 A | 2013-10-26 | 29 | 95% | 0.05d | 63.7d | 0d | Nguyễn Tấn Hoan (Trưởng nhóm) | 8h | 7.6h | 320,000 | 304,000 |
| 31 | 1.5.3 | **Thiết kế dữ liệu cho phần mềm** | 12d | 2013-10-26 A | 2013-11-08 |  | 89% | 1.3d | 53d |  |  | 96h | 85.6h | 3,400,000 | 3,028,000 |
| 32 | 1.5.3.1 | Xét các yêu cầu phần mềm và lập mô hình dữ liệu | 4d | 2013-10-26 A | 2013-10-31 | 30 | 90% | 0.4d | 60.1d | 0d | Phan Văn Tâm | 32h | 28.8h | 1,120,000 | 1,008,000 |
| 33 | 1.5.3.2 | Thiết kế dự liệu trên cơ sở dữ liệu (SQL) | 6d | 2013-10-31 A | 2013-11-06 | 32 | 90% | 0.6d | 54.7d | 0d | Huỳnh Ngọc Hiệp | 48h | 43.2h | 1,680,000 | 1,512,000 |
| 34 | 1.5.3.3 | Tổng hợp về phần thiết kế dữ liệu | 1d | 2013-11-06 A | 2013-11-07 | 33 | 80% | 0.2d | 53.9d | 0d | Nguyễn Tấn Hoan (Trưởng nhóm) | 8h | 6.4h | 320,000 | 256,000 |
| 35 | 1.5.3.4 | Kiểm duyệt phần thiết kế dữ liệu cho phần mềm | 1d | 2013-11-07 A | 2013-11-08 | 34 | 90% | 0.1d | 53d | 0d | Huỳnh Ngọc Hiệp | 8h | 7.2h | 280,000 | 252,000 |
| 36 | 1.5.4 | **Thiết kế giao diện** | 18d | 2013-11-08 A | 2013-11-26 | 35 | 89% | 2d | 37d |  |  | 144h | 128h | 5,200,000 | 4,632,000 |
| 37 | 1.5.4.1 | Thiết kế màn hình chính | 5d | 2013-11-08 A | 2013-11-13 | 35 | 90% | 0.5d | 48.7d | 0d | Nguyễn Văn Sinh | 40h | 36h | 1,400,000 | 1,260,000 |
| 38 | 1.5.4.2 | Thiết kế các màn hình con với tính tiện dụng | 4d | 2013-11-13 A | 2013-11-16 | 37 | 80% | 0.8d | 45.5d | 0d | Phan Văn Tâm | 32h | 25.6h | 1,120,000 | 896,000 |
| 39 | 1.5.4.3 | Thiết kế màn hình con với tính hiệu quả | 5d | 2013-11-16 A | 2013-11-22 | 38 | 90% | 0.5d | 41d |  | Huỳnh Ngọc Hiệp | 40h | 36h | 1,400,000 | 1,260,000 |
| 40 | 1.5.4.4 | Tổng hợp về phần thiết kế giao diện | 2d | 2013-11-22 A | 2013-11-23 A | 39 | 100% |  |  |  | Nguyễn Tấn Hoan (Trưởng nhóm) | 16h | 16h | 640,000 | 640,000 |
| 41 | 1.5.4.5 | Kiểm duyệt phần thiết kế giao diện | 2d | 2013-11-23 A | 2013-11-26 | 40 | 90% | 0.2d | 36.3d | 0d | Nguyễn Tấn Hoan (Trưởng nhóm) | 16h | 14.4h | 640,000 | 576,000 |
| 42 | 1.5.5 | **Thiết kế xử lí** | 13d | 2013-11-26 A | 2013-12-09 |  | 95% | 0.7d | 24d |  |  | 104h | 98.4h | 3,720,000 | 3,524,000 |
| 43 | 1.5.5.1 | Thiết kế màn hình chính | 3d | 2013-11-26 A | 2013-11-29 | 41 | 90% | 0.3d | 33.6d | 0d | Phan Văn Tâm | 24h | 21.6h | 840,000 | 756,000 |
| 44 | 1.5.5.2 | Thiết kế màn hình con | 4d | 2013-11-29 A | 2013-12-03 | 43 | 90% | 0.4d | 30d |  | Huỳnh Ngọc Hiệp | 32h | 28.8h | 1,120,000 | 1,008,000 |
| 45 | 1.5.5.3 | Kế hợp các màn hình với nhau | 4d | 2013-12-03 A | 2013-12-07 A | 44 | 100% |  |  |  | Nguyễn Văn Sinh | 32h | 32h | 1,120,000 | 1,120,000 |
| 46 | 1.5.5.4 | Tổng hợp về phần thiết kế xử lí | 1d | 2013-12-07 A | 2013-12-07 A | 45 | 100% |  |  |  | Nguyễn Tấn Hoan (Trưởng nhóm) | 8h | 8h | 320,000 | 320,000 |
| 47 | 1.5.5.5 | Kiểm duyệt phần thiết kế xử lí | 1d | 2013-12-07 A | 2013-12-09 A | 46 | 100% |  |  |  | Nguyễn Tấn Hoan (Trưởng nhóm) | 8h | 8h | 320,000 | 320,000 |
| 48 | 1.5.6 | Tổng hợp tài liệu phần thiết kế phần mềm | 3d | 2013-12-09 A | 2013-12-12 | 47 | 90% | 0.3d | 0d |  | Phan Văn Tâm | 24h | 21.6h | 840,000 | 756,000 |
| 49 | 1.5.7 | Kết nối các module lần cuối | 4d | 2013-12-12 | 2013-12-16 | 48 |  |  | 0d |  | Nguyễn Văn Sinh | 32h |  | 1,120,000 |  |
| 50 | 1.6 | Thực thi và cài đặt | 7d | 2013-12-16 | 2013-12-23 | 49 |  |  | 0d |  | Nguyễn Tấn Hoan (Trưởng nhóm) | 56h |  | 2,240,000 |  |
| 51 | 1.7 | Kiểm thử | 3d | 2013-12-23 | 2013-12-26 | 50 |  |  | 0d |  | Huỳnh Ngọc Hiệp | 24h |  | 840,000 |  |
| 52 | 1.8 | Viết hướng dẫn sử dụng phần mềm | 2d | 2013-12-26 | 2013-12-28 | 51 |  |  | 0d |  | Nguyễn Tấn Hoan (Trưởng nhóm) | 16h |  | 640,000 |  |
| 53 | 1.9 | Viết báo cáo đồ án | 4d | 2013-12-28 | 2014-01-01 | 52 |  |  | 0d |  | Nguyễn Tấn Hoan (Trưởng nhóm) | 32h |  | 1,280,000 |  |
| 54 | 1.10 | In báo cáo | 1d | 2014-01-01 | 2014-01-02 | 53 |  |  | 0d |  | Giấy [300 Trang] |  |  | 60,000 |  |

| ID | WBS | Task | Duration | Start | Finish | Predecessors | Total slack | Free slack | Resources | Cost |
| --- | --- | --- | --- | --- | --- | --- | --- | --- | --- | --- |
| 55 | 1.11 | **Tổng kết chi phí** | 730d | 2014-01-02 | 2016-01-02 |  | 0d |  |  | 8,380,000 |
| 56 | 1.11.1 | Tổng kết thời gian dùng máy | 1d | 2014-01-02 | 2014-01-03 | 54 | 4d | 0d | Điện [200 Giờ] | 200,000 |
| 57 | 1.11.2 | Tổng kết chi phí nước uống | 1d | 2014-01-02 | 2014-01-03 | 56SS | 4d | 0d | Nước uống [10 Chai] | 80,000 |
| 58 | 1.11.3 | Chi phí phát sinh | 1d | 2014-01-02 | 2014-01-03 | 57SS | 4d |  |  | 100,000 |
| 59 | 1.11.4 | Vận hành, phát triển, bảo trì và nâng cấp phần mềm | 730d | 2014-01-02 | 2016-01-02 | 54 | 0d |  | Bảo trì [2 Năm] | 8,000,000 |
