Schedule from MS Project, 2013-08-26 to 2014-01-13, 7 hours a day, costs in ₫, A marks actual dates.

## Calendars

- Standard: Mon-Fri 08:00-12:00, 13:00-17:00; Sat-Sun off.

## Resources

| Resource | Rate | Cost per use |
| --- | --- | --- |
| Trưởng nhóm | 50000 | 100000 |
| Nguyễn Tấn Hoan (Trưởng nhóm) | 50000 | 100000 |
| Nguyễn Văn Sinh | 40000 | 90000 |
| Huỳnh Ngọc Hiệp | 40000 | 90000 |
| Phan Văn Tâm | 40000 | 90000 |

## Schedule

| ID | WBS | Task | Duration | Start | Finish | Predecessors | Complete | Remaining | Total slack | Free slack | Constraint | Resources | Work | Actual work | Cost | Actual cost |
| --- | --- | --- | --- | --- | --- | --- | --- | --- | --- | --- | --- | --- | --- | --- | --- | --- |
| 1 | 1 | **Đồ án QUẢN LÝ NHÀ HÀNG KHÁCH SẠN** | 114.57d | 2013-08-26 A | 2014-01-13 |  | 44% | 63.79d | 0d |  |  |  | 810.5h | 359.21h | 38,650,000 | 17,632,400 |
| 2 | 1.1 | Tập hợp thành viên cho nhóm | 2d | 2013-08-26 A | 2013-08-27 A |  | 100% |  |  |  | start no earlier than 2013-09-20 | Trưởng nhóm | 14h | 14h | 800,000 | 800,000 |
| 3 | 1.2 | Xác định đề tài | 3d | 2013-09-03 A | 2013-09-05 A | 2FS+4.57d | 100% |  |  |  |  | Nguyễn Tấn Hoan (Trưởng nhóm) | 21h | 21h | 1,150,000 | 1,150,000 |
| 4 | 1.3 | **Xác định yêu cầu đề tài** | 8d | 2013-09-05 A | 2013-09-13 | 3 | 86% | 1.08d | 34.47d | 0d |  |  | 82h | 70.9h | 3,900,000 | 3,440,000 |
| 5 | 1.3.1 | **Xác định các yêu cầu của phần mềm** | 6.11d | 2013-09-05 A | 2013-09-12 |  | 85% | 0.92d | 35.67d | 0d |  |  | 42h | 35.7h | 1,860,000 | 1,608,000 |
| 6 | 1.3.1.1 | Xác định các yêu cầu chức năng | 3d | 2013-09-05 A | 2013-09-09 |  | 90% | 0.3d | 38.78d | 0.71d |  | Huỳnh Ngọc Hiệp | 21h | 18.9h | 930,000 | 846,000 |
| 7 | 1.3.1.2 | Xác định các yêu cầu phi chức năng | 3d | 2013-09-05 A | 2013-09-12 | 6SS | 80% | 0.6d | 35.67d | 0d |  | Nguyễn Văn Sinh | 21h | 16.8h | 930,000 | 762,000 |
| 8 | 1.3.2 | Đặc tả các yêu cầu phần mềm (Thiết kế biểu mẫu và quy định) | 2.29d | 2013-09-09 A | 2013-09-12 | 5, 7 | 90% | 0.23d | 35.67d | 0d |  | Nguyễn Tấn Hoan (Trưởng nhóm) | 16h | 14.4h | 900,000 | 820,000 |
| 9 | 1.3.3 | Mô hình hóa các yêu cầu | 2.29d | 2013-09-11 A | 2013-09-13 | 8 | 80% | 0.46d | 34.9d |  |  | Phan Văn Tâm | 16h | 12.8h | 730,000 | 602,000 |
| 10 | 1.3.4 | Xác định môi trường phát triển của dự án | 1.14d | 2013-09-13 A | 2013-09-13 A | 9 | 100% |  |  |  |  | Nguyễn Văn Sinh | 8h | 8h | 410,000 | 410,000 |
| 11 | 1.4 | **Phân tích phần mềm** | 6.86d | 2013-09-16 A | 2013-09-23 | 10, 4 | 92% | 0.57d | 28.18d | 0d |  |  | 48h | 44h | 2,360,000 | 2,184,000 |
| 12 | 1.4.1 | Phân tích các module của phần mềm | 2.29d | 2013-09-16 A | 2013-09-17 |  | 90% | 0.23d | 32.5d | 2.29d |  | Nguyễn Tấn Hoan (Trưởng nhóm) | 16h | 14.4h | 900,000 | 820,000 |
| 13 | 1.4.2 | Phân tích các yêu cầu của từng module | 2.29d | 2013-09-20 A | 2013-09-23 | 12 | 90% | 0.23d | 28.18d | 0d |  | Huỳnh Ngọc Hiệp | 16h | 14.4h | 730,000 | 666,000 |
| 14 | 1.4.3 | Phân tích các công nghệ sử dụng cho từng module | 2.29d | 2013-09-20 A | 2013-09-23 | 13SS | 95% | 0.11d | 28.18d | 0d |  | Phan Văn Tâm | 16h | 15.2h | 730,000 | 698,000 |
| 15 | 1.5 | **Thiết kế phần mềm** | 68.71d | 2013-09-24 A | 2013-12-17 | 11, 14 | 41% | 40.43d | 0d |  |  |  | 508.5h | 209.31h | 23,840,000 | 10,058,400 |
| 16 | 1.5.1 | **Thiết kế các yêu cầu hệ thống phần mềm** | 11.43d | 2013-09-24 A | 2013-10-07 |  | 91% | 1.03d | 16.37d | 0d |  |  | 96h | 87.36h | 5,010,000 | 4,640,400 |
| 17 | 1.5.1.1 | Thiết kế yêu cầu nghiệp vụ | 2.29d | 2013-09-24 A | 2013-09-25 |  | 90% | 0.23d | 25.17d | 0d |  | Huỳnh Ngọc Hiệp | 16h | 14.4h | 730,000 | 666,000 |
| 18 | 1.5.1.2 | Thiết kế các yêu cầu tiến hóa | 2.29d | 2013-09-26 A | 2013-09-27 | 17 | 90% | 0.23d | 23.11d | 0d |  | Nguyễn Văn Sinh | 16h | 14.4h | 730,000 | 666,000 |
| 19 | 1.5.1.3 | Thiết kế các yêu cầu hiệu quả | 1.14d | 2013-09-30 A | 2013-09-30 | 18 | 90% | 0.11d | 22.09d | 0d |  | Nguyễn Tấn Hoan (Trưởng nhóm) | 8h | 7.2h | 500,000 | 460,000 |
| 20 | 1.5.1.4 | Thiết kế các yêu cầu tiện dụng | 1.14d | 2013-09-30 A | 2013-10-01 | 19SS | 95% | 0.06d | 20.94d | 0d |  | Phan Văn Tâm | 8h | 7.6h | 410,000 | 394,000 |
| 21 | 1.5.1.5 | Thiết kế các yêu cầu tương thích | 1.14d | 2013-10-01 A | 2013-10-01 | 20 | 90% | 0.11d | 20.94d | 0d |  | Huỳnh Ngọc Hiệp | 8h | 7.2h | 410,000 | 378,000 |
| 22 | 1.5.1.6 | Thiết kế các yêu cầu bảo mật | 1.14d | 2013-10-01 A | 2013-10-01 | 21SS | 97% | 0.03d | 20.71d | 0d |  | Nguyễn Văn Sinh | 8h | 7.76h | 410,000 | 400,400 |
| 23 | 1.5.1.7 | Thiết kế yêu cầu an toàn | 1.14d | 2013-10-02 A | 2013-10-03 | 22 | 80% | 0.23d | 18.77d | 1.14d |  | Nguyễn Tấn Hoan (Trưởng nhóm) | 8h | 6.4h | 500,000 | 420,000 |
| 24 | 1.5.1.8 | Thiết kế các yêu cầu công nghệ | 1.14d | 2013-10-03 A | 2013-10-03 | 23SS | 80% | 0.23d | 18.66d |  |  | Phan Văn Tâm | 8h | 6.4h | 410,000 | 346,000 |
| 25 | 1.5.1.9 | Tổng kết tài liệu về phần các yêu cầu của hệ thống phần mềm | 1.14d | 2013-10-04 A | 2013-10-04 A | 24 | 100% |  |  |  |  | Nguyễn Tấn Hoan (Trưởng nhóm) | 8h | 8h | 500,000 | 500,000 |
| 26 | 1.5.1.10 | Kiểm duyệt lại phần thiết kế các yêu cầu phần mềm | 1.14d | 2013-10-07 A | 2013-10-07 A | 25 | 100% |  |  |  |  | Huỳnh Ngọc Hiệp | 8h | 8h | 410,000 | 410,000 |

| ID | WBS | Task | Duration | Start | Finish | Predecessors | Complete | Remaining | Total slack | Free slack | Resources | Work | Actual work | Cost | Actual cost |
| --- | --- | --- | --- | --- | --- | --- | --- | --- | --- | --- | --- | --- | --- | --- | --- |
| 27 | 1.5.2 | **Mô hình hóa dữ liệu** | 10.29d | 2013-10-07 A | 2013-10-17 | 16, 26 | 99% | 0.11d | 7.34d | 0d |  | 72h | 71.2h | 3,240,000 | 3,208,000 |
| 28 | 1.5.2.1 | Thiết kế sơ đồ luồng dữ liệu | 8d | 2013-10-07 A | 2013-10-15 A |  | 100% |  |  |  | Nguyễn Văn Sinh | 56h | 56h | 2,330,000 | 2,330,000 |
| 29 | 1.5.2.2 | Tổng hợp tài liệu về phần sơ đồ luồng dữ liệu | 1.14d | 2013-10-16 A | 2013-10-16 | 28 | 90% | 0.11d | 8.49d |  | Huỳnh Ngọc Hiệp | 8h | 7.2h | 410,000 | 378,000 |
| 30 | 1.5.2.3 | Kiểm duyệt phần mô hình hóa dữ liệu | 1.14d | 2013-10-17 A | 2013-10-17 A | 29 | 100% |  |  |  | Nguyễn Tấn Hoan (Trưởng nhóm) | 8h | 8h | 500,000 | 500,000 |
| 31 | 1.5.3 | **Thiết kế dữ liệu cho phần mềm** | 9.57d | 2013-10-18 A | 2013-10-30 | 27, 30 | 74% | 2.48d | 0.29d |  |  | 68.5h | 50.75h | 3,190,000 | 2,210,000 |
| 32 | 1.5.3.1 | Xét các yêu cầu phần mềm và lập mô hình dữ liệu | 2.5d | 2013-10-18 A | 2013-10-22 |  | 90% | 0.25d | 7.36d |  | Phan Văn Tâm | 17.5h | 15.75h | 790,000 | 720,000 |
| 33 | 1.5.3.2 | Thiết kế dự liệu trên cơ sở dữ liệu (SQL) | 5d | 2013-10-22 A | 2013-10-28 A | 32 | 100% |  |  |  | Huỳnh Ngọc Hiệp | 35h | 35h | 1,490,000 | 1,490,000 |
| 34 | 1.5.3.3 | Tổng hợp về phần thiết kế dữ liệu | 1.14d | 2013-10-28 | 2013-10-29 | 33 |  |  | 0.29d | 0d | Nguyễn Tấn Hoan (Trưởng nhóm) | 8h |  | 500,000 |  |
| 35 | 1.5.3.4 | Kiểm duyệt phần thiết kế dữ liệu cho phần mềm | 1.14d | 2013-10-29 | 2013-10-30 | 34 |  |  | 0.29d |  | Huỳnh Ngọc Hiệp | 8h |  | 410,000 |  |
| 36 | 1.5.4 | **Thiết kế giao diện** | 14.57d | 2013-10-30 | 2013-11-18 | 31, 35 |  |  | 0d |  |  | 104h |  | 4,870,000 |  |
| 37 | 1.5.4.1 | Thiết kế màn hình chính | 3.43d | 2013-10-30 | 2013-11-04 |  |  |  | 0d |  | Nguyễn Văn Sinh | 24h |  | 1,050,000 |  |
| 38 | 1.5.4.2 | Thiết kế các màn hình con với tính tiện dụng | 4.57d | 2013-11-04 | 2013-11-08 | 37 |  |  | 0d |  | Phan Văn Tâm | 32h |  | 1,370,000 |  |
| 39 | 1.5.4.3 | Thiết kế màn hình con với tính hiệu quả | 3.43d | 2013-11-08 | 2013-11-13 | 38 |  |  | 0d |  | Huỳnh Ngọc Hiệp | 24h |  | 1,050,000 |  |
| 40 | 1.5.4.4 | Tổng hợp về phần thiết kế giao diện | 2.29d | 2013-11-13 | 2013-11-15 | 39 |  |  | 0d |  | Nguyễn Tấn Hoan (Trưởng nhóm) | 16h |  | 900,000 |  |
| 41 | 1.5.4.5 | Kiểm duyệt phần thiết kế giao diện | 1.14d | 2013-11-15 | 2013-11-18 | 40 |  |  | 0d |  | Nguyễn Tấn Hoan (Trưởng nhóm) | 8h |  | 500,000 |  |
| 42 | 1.5.5 | **Thiết kế xử lí** | 15.71d | 2013-11-18 | 2013-12-06 | 36, 41 |  |  | 0d |  |  | 112h |  | 5,110,000 |  |
| 43 | 1.5.5.1 | Thiết kế màn hình chính | 3d | 2013-11-18 | 2013-11-20 |  |  |  | 0d |  | Phan Văn Tâm | 21h |  | 930,000 |  |
| 44 | 1.5.5.2 | Thiết kế màn hình con | 5.71d | 2013-11-21 | 2013-11-27 | 43 |  |  | 0d |  | Huỳnh Ngọc Hiệp | 40h |  | 1,690,000 |  |
| 45 | 1.5.5.3 | Kế hợp các màn hình với nhau | 5d | 2013-11-27 | 2013-12-04 | 44 |  |  | 0d |  | Nguyễn Văn Sinh | 35h |  | 1,490,000 |  |
| 46 | 1.5.5.4 | Tổng hợp về phần thiết kế giao diện | 1.14d | 2013-12-04 | 2013-12-05 | 45 |  |  | 0d |  | Nguyễn Tấn Hoan (Trưởng nhóm) | 8h |  | 500,000 |  |
| 47 | 1.5.5.5 | Kiểm duyệt phần thiết kế xử lí | 1.14d | 2013-12-05 | 2013-12-06 | 46 |  |  | 0d |  | Nguyễn Tấn Hoan (Trưởng nhóm) | 8h |  | 500,000 |  |
| 48 | 1.5.6 | Tổng hợp tài liệu phần thiết kế phần mềm | 3.43d | 2013-12-06 | 2013-12-11 | 47, 42 |  |  | 0d |  | Phan Văn Tâm | 24h |  | 1,050,000 |  |
| 49 | 1.5.7 | Kết nối các module lần cuối | 4.57d | 2013-12-11 | 2013-12-17 | 48 |  |  | 0d |  | Nguyễn Văn Sinh | 32h |  | 1,370,000 |  |
| 50 | 1.6 | Thực thi và cài đặt | 4.57d | 2013-12-19 | 2013-12-25 | 15, 49FS+2.29d |  |  | 0d |  | Nguyễn Tấn Hoan (Trưởng nhóm) | 32h |  | 1,700,000 |  |
| 51 | 1.7 | Kiểm thử | 3.43d | 2013-12-25 | 2013-12-30 | 50 |  |  | 0d |  | Huỳnh Ngọc Hiệp | 24h |  | 1,050,000 |  |
| 52 | 1.8 | Viết hướng dẫn sử dụng phần mềm | 2.29d | 2013-12-30 | 2014-01-01 | 51 |  |  | 0d |  | Nguyễn Tấn Hoan (Trưởng nhóm) | 16h |  | 900,000 |  |
| 53 | 1.9 | Viết báo cáo đồ án | 2.29d | 2014-01-01 | 2014-01-03 | 52 |  |  | 0d |  | Nguyễn Tấn Hoan (Trưởng nhóm) | 16h |  | 900,000 |  |
| 54 | 1.10 | Vận hành, phát triển, bảo trì và nâng cấp phần mềm | 7d | 2014-01-03 | 2014-01-13 | 53 |  |  | 0d |  | Phan Văn Tâm | 49h |  | 2,050,000 |  |
